# Plan de Trabajo CAME Detallado

Schedule from MS Project, 2013-01-14 to 2013-04-12, status date 2013-02-24, costs in $, A marks actual dates.

## Calendars

- Estándar: Mon-Fri 09:00-13:00, 15:00-19:00; Sat-Sun off.

## Resources

| Resource | Group | Rate |
| --- | --- | --- |
| Analista | Analisis | 50 |
| Implementador |  | 50 |
| Diseñador de software | Diseño | 50 |
| Especificador de Requerimientos | Analisis | 50 |
| Tester | Pruebas | 50 |
| Programador B | Desarrollo | 50 |
| Jefe de Proyecto | Jefe | 50 |
| Pruebas | Pruebas | 50 |
| Programador A | Desarrollo | 50 |
| Configurador |  | 50 |

## Schedule

| ID | WBS | Task | Type | Duration | Start | Finish | Predecessors | Complete | Remaining | Total slack | Resources | Work | Actual work | Cost | Actual cost |
| --- | --- | --- | --- | --- | --- | --- | --- | --- | --- | --- | --- | --- | --- | --- | --- |
| 1 | 1 | **Proyecto CAME** |  | 65d | 2013-01-14 A | 2013-04-12 |  | 24% | 49.26d | 0d |  | 1370h | 408h | 68,500 | 20,400 |
| 2 | 1.1 | **Fase de Inicio** |  | 20d | 2013-01-14 A | 2013-02-08 A |  | 100% |  |  |  | 408h | 408h | 20,400 | 20,400 |
| 3 | 1.1.1 | Comienzo | milestone | 0d | 2013-01-14 A | 2013-01-14 A |  | 100% |  |  | Jefe de Proyecto |  |  |  |  |
| 4 | 1.1.2 | Revision de casos de Empresas |  | 0.5d | 2013-01-14 A | 2013-01-14 A | 3 | 100% |  |  | Jefe de Proyecto | 4h | 4h | 200 | 200 |
| 5 | 1.1.3 | Selección de Empresa |  | 0.5d | 2013-01-14 A | 2013-01-14 A | 4 | 100% |  |  | Jefe de Proyecto | 4h | 4h | 200 | 200 |
| 6 | 1.1.4 | **Interacion 1** |  | 20d | 2013-01-14 A | 2013-02-08 A |  | 100% |  |  |  | 400h | 400h | 20,000 | 20,000 |
| 7 | 1.1.4.1 | **Modelado de Negocios** |  | 4d | 2013-01-15 A | 2013-01-18 A |  | 100% |  |  |  | 32h | 32h | 1,600 | 1,600 |
| 8 | 1.1.4.1.1 | Definir Vocabulario Comun |  | 0.5d | 2013-01-15 A | 2013-01-15 A | 5 | 100% |  |  | Especificador de Requerimientos | 4h | 4h | 200 | 200 |
| 9 | 1.1.4.1.2 | Encontrar Actores Empresariales |  | 0.5d | 2013-01-15 A | 2013-01-15 A | 8 | 100% |  |  | Especificador de Requerimientos | 4h | 4h | 200 | 200 |
| 10 | 1.1.4.1.3 | Encontrar Casos de Uso Empresariales |  | 0.5d | 2013-01-16 A | 2013-01-16 A | 9 | 100% |  |  | Especificador de Requerimientos | 4h | 4h | 200 | 200 |
| 11 | 1.1.4.1.4 | Describir Casos de Uso de la Empresa |  | 1d | 2013-01-16 A | 2013-01-17 A | 10 | 100% |  |  | Especificador de Requerimientos | 8h | 8h | 400 | 400 |
| 12 | 1.1.4.1.5 | Estructura de Casos de Uso de la Empresa |  | 1d | 2013-01-17 A | 2013-01-18 A | 11 | 100% |  |  | Especificador de Requerimientos | 8h | 8h | 400 | 400 |
| 13 | 1.1.4.1.6 | Revision de Estructura de Casos de Uso |  | 0.5d | 2013-01-18 A | 2013-01-18 A | 12 | 100% |  |  | Especificador de Requerimientos | 4h | 4h | 200 | 200 |
| 14 | 1.1.4.1.7 | Aceptacion de Estructura de Casos de Uso | milestone | 0d | 2013-01-18 A | 2013-01-18 A | 13 | 100% |  |  | Analista |  |  |  |  |
| 15 | 1.1.4.2 | **Requisitos** |  | 16.5d | 2013-01-15 A | 2013-02-06 A |  | 100% |  |  |  | 108h | 108h | 5,400 | 5,400 |
| 16 | 1.1.4.2.1 | Capturar Vocabulario Común |  | 0.5d | 2013-01-15 A | 2013-01-15 A | 8 | 100% |  |  | Analista | 4h | 4h | 200 | 200 |
| 17 | 1.1.4.2.2 | Especificaciones Adicionales |  | 1d | 2013-01-21 A | 2013-01-21 A | 14 | 100% |  |  | Analista | 8h | 8h | 400 | 400 |
| 18 | 1.1.4.2.3 | Administrar Dependencias |  | 1d | 2013-01-22 A | 2013-01-22 A | 17 | 100% |  |  | Analista | 8h | 8h | 400 | 400 |
| 19 | 1.1.4.2.4 | Refinar descripcion de Actores y Casos de Uso |  | 1d | 2013-01-23 A | 2013-01-23 A | 18 | 100% |  |  | Analista | 8h | 8h | 400 | 400 |
| 20 | 1.1.4.2.5 | Definir Sistemas y Restricciones |  | 2d | 2013-01-24 A | 2013-01-25 A | 19 | 100% |  |  | Analista | 16h | 16h | 800 | 800 |
| 21 | 1.1.4.2.6 | Desarrollar Visión |  | 5d | 2013-01-28 A | 2013-02-01 A | 20 | 100% |  |  | Especificador de Requerimientos | 40h | 40h | 2,000 | 2,000 |
| 22 | 1.1.4.2.7 | Revisar Vision |  | 2d | 2013-02-04 A | 2013-02-05 A | 21 | 100% |  |  | Analista | 16h | 16h | 800 | 800 |
| 23 | 1.1.4.2.8 | Priorizar Casos de Uso |  | 1d | 2013-02-06 A | 2013-02-06 A | 22 | 100% |  |  | Analista | 8h | 8h | 400 | 400 |
| 24 | 1.1.4.2.9 | Caso de Uso Priorizado | milestone | 0d | 2013-02-06 A | 2013-02-06 A | 23 | 100% |  |  | Analista |  |  |  |  |

| ID | WBS | Task | Type | Duration | Start | Finish | Predecessors | Complete | Total slack | Free slack | Constraint | Resources | Work | Actual work | Cost | Actual cost |
| --- | --- | --- | --- | --- | --- | --- | --- | --- | --- | --- | --- | --- | --- | --- | --- | --- |
| 25 | 1.1.4.3 | **Gestion del cambio y Configuraciones** |  | 19d | 2013-01-15 A | 2013-02-08 A |  | 100% |  |  |  |  | 100h | 100h | 5,000 | 5,000 |
| 26 | 1.1.4.3.1 | Establecer Practicas |  | 3d | 2013-01-15 A | 2013-01-17 A | 5 | 100% |  |  |  | Configurador | 24h | 24h | 1,200 | 1,200 |
| 27 | 1.1.4.3.2 | Establecer Medio |  | 3d | 2013-01-18 A | 2013-01-22 A | 26 | 100% |  |  |  | Configurador | 24h | 24h | 1,200 | 1,200 |
| 28 | 1.1.4.3.3 | Gestionar los Cambios |  | 13d | 2013-01-23 A | 2013-02-08 A | 27 | 100% |  |  |  | Configurador [50%] | 52h | 52h | 2,600 | 2,600 |
| 29 | 1.1.4.3.4 | Control de Cambios hechos | milestone | 0d | 2013-02-08 A | 2013-02-08 A | 28 | 100% |  |  |  |  |  |  |  |  |
| 30 | 1.1.4.4 | **Administracion de Proyectos** |  | 20d | 2013-01-14 A | 2013-02-08 A |  | 100% |  |  |  |  | 160h | 160h | 8,000 | 8,000 |
| 31 | 1.1.4.4.1 | Personal del Proyecto |  | 2d | 2013-01-14 A | 2013-01-15 A | 3 | 100% |  |  |  | Jefe de Proyecto | 16h | 16h | 800 | 800 |
| 32 | 1.1.4.4.2 | Identificar Riesgos |  | 2d | 2013-01-16 A | 2013-01-17 A | 31 | 100% |  |  |  | Analista | 16h | 16h | 800 | 800 |
| 33 | 1.1.4.4.3 | Elaborar Lista de Riesgos |  | 2d | 2013-01-18 A | 2013-01-21 A | 32 | 100% |  |  |  | Analista | 16h | 16h | 800 | 800 |
| 34 | 1.1.4.4.4 | Refinar Lista de Riesgos |  | 1d | 2013-01-22 A | 2013-01-22 A | 33 | 100% |  |  |  | Analista | 8h | 8h | 400 | 400 |
| 35 | 1.1.4.4.5 | Lista de Riesgos | milestone | 0d | 2013-01-22 A | 2013-01-22 A | 34 | 100% |  |  |  | Analista |  |  |  |  |
| 36 | 1.1.4.4.6 | Plan de Desarrollo de Software |  | 5d | 2013-01-23 A | 2013-01-29 A | 35 | 100% |  |  |  | Jefe de Proyecto | 40h | 40h | 2,000 | 2,000 |
| 37 | 1.1.4.4.7 | Estatuto de Proyecto |  | 5d | 2013-01-30 A | 2013-02-05 A | 36 | 100% |  |  |  | Jefe de Proyecto | 40h | 40h | 2,000 | 2,000 |
| 38 | 1.1.4.4.8 | Propuesta |  | 3d | 2013-02-06 A | 2013-02-08 A | 37 | 100% |  |  |  | Jefe de Proyecto | 24h | 24h | 1,200 | 1,200 |
| 39 | 1.1.4.4.9 | Presentacion de Propuesta | milestone | 0d | 2013-02-08 A | 2013-02-08 A | 38 | 100% |  |  |  | Jefe de Proyecto |  |  |  |  |
| 40 | 1.1.4.5 | Entorno |  | 20d | 2013-01-14 A | 2013-02-08 A | 3 | 100% |  |  |  |  |  |  |  |  |
| 41 | 1.1.5 | Fin de Fase | milestone | 0d | 2013-02-08 A | 2013-02-08 A | 39 | 100% |  |  |  | Jefe de Proyecto |  |  |  |  |
| 42 | 1.2 | **Fase de Elaboracion** |  | 45d | 2013-02-08 | 2013-04-12 |  |  | 0d |  |  |  | 962h |  | 48,100 |  |
| 43 | 1.2.1 | Comienzo de Fase | milestone | 0d | 2013-02-08 | 2013-02-08 | 41 |  | 0d |  | start no earlier than 2013-01-14 | Jefe de Proyecto |  |  |  |  |
| 44 | 1.2.2 | **Interacion 1** |  | 45d | 2013-02-11 | 2013-04-12 |  |  | 0d |  |  |  | 962h |  | 48,100 |  |
| 45 | 1.2.2.1 | **Requisitos** |  | 5d | 2013-02-11 | 2013-02-15 |  |  | 0d |  |  |  | 50h |  | 2,500 |  |
| 46 | 1.2.2.1.1 | Manejo de Dependencias |  | 0.5d | 2013-02-11 | 2013-02-11 | 43 |  | 0d |  |  | Analista | 4h |  | 200 |  |
| 47 | 1.2.2.1.2 | Estructurar Modelo de Casos de Uso |  | 1d | 2013-02-11 | 2013-02-12 | 46 |  | 0d |  |  | Analista | 8h |  | 400 |  |
| 48 | 1.2.2.1.3 | **Detallar casos de uso Priorizados** |  | 2d | 2013-02-12 | 2013-02-14 |  |  | 41.5d |  |  |  | 16h |  | 800 |  |
| 49 | 1.2.2.1.3.1 | Detallado de Caso de Uso Adm Alumnos |  | 0.5d | 2013-02-12 | 2013-02-12 | 47 |  | 41.5d | 0d |  | Analista | 4h |  | 200 |  |
| 50 | 1.2.2.1.3.2 | Detallado de Caso de Uso de Adm Diagnosticos |  | 0.5d | 2013-02-13 | 2013-02-13 | 49 |  | 41.5d | 0d |  | Analista | 4h |  | 200 |  |
| 51 | 1.2.2.1.3.3 | Detallado de Caso de Uso de Adm Grupos |  | 0.5d | 2013-02-13 | 2013-02-13 | 50 |  | 41.5d | 0d |  | Analista | 4h |  | 200 |  |
| 52 | 1.2.2.1.3.4 | Detallado de Caso de Uso Adm Rutinas |  | 0.5d | 2013-02-14 | 2013-02-14 | 51 |  | 41.5d |  |  | Analista | 4h |  | 200 |  |
| 53 | 1.2.2.1.4 | Planeacion de la Interfaz de Usuario |  | 1d | 2013-02-12 | 2013-02-13 | 47 |  | 0d |  |  | Diseñador de software | 8h |  | 400 |  |
| 54 | 1.2.2.1.5 | Modelado de la Intefaz de Usuario |  | 1.5d | 2013-02-13 | 2013-02-14 | 53 |  | 0d |  |  | Diseñador de software [50%] | 6h |  | 300 |  |
| 55 | 1.2.2.1.6 | Revisar Requerimientos |  | 1d | 2013-02-15 | 2013-02-15 | 54 |  | 0d |  |  | Analista | 8h |  | 400 |  |
| 56 | 1.2.2.1.7 | Casos de Uso Detallados | milestone | 0d | 2013-02-15 | 2013-02-15 | 55 |  | 0d |  |  | Analista |  |  |  |  |

| ID | WBS | Task | Type | Duration | Start | Finish | Predecessors | Total slack | Free slack | Resources | Work | Cost |
| --- | --- | --- | --- | --- | --- | --- | --- | --- | --- | --- | --- | --- |
| 57 | 1.2.2.2 | **Analisis y Diseño** |  | 10d | 2013-02-18 | 2013-03-01 |  | 0d |  |  | 104h | 5,200 |
| 58 | 1.2.2.2.1 | Analisis de Arquitectura |  | 1d | 2013-02-18 | 2013-02-18 | 56 | 0d |  | Analista | 8h | 400 |
| 59 | 1.2.2.2.2 | **Analisis de Casos de Uso Priorizados** |  | 2d | 2013-02-19 | 2013-02-20 |  | 0d |  |  | 16h | 800 |
| 60 | 1.2.2.2.2.1 | Analizar Caso de Uso Adm Alumnos |  | 0.5d | 2013-02-19 | 2013-02-19 | 58 | 0d |  | Analista | 4h | 200 |
| 61 | 1.2.2.2.2.2 | Analizar Caso de Uso Adm Diagnosticos |  | 0.5d | 2013-02-19 | 2013-02-19 | 60 | 0d |  | Analista | 4h | 200 |
| 62 | 1.2.2.2.2.3 | Analizar Caso de Uso Adm Grupos |  | 0.5d | 2013-02-20 | 2013-02-20 | 61 | 0d |  | Analista | 4h | 200 |
| 63 | 1.2.2.2.2.4 | Analizar Caso de Uso Adm Rutinas |  | 0.5d | 2013-02-20 | 2013-02-20 | 62 | 0d |  | Analista | 4h | 200 |
| 64 | 1.2.2.2.3 | Diseño Arquitectonico |  | 1d | 2013-02-21 | 2013-02-21 | 63 | 0d |  | Diseñador de software | 8h | 400 |
| 65 | 1.2.2.2.4 | Modelo de Dominio |  | 1d | 2013-02-22 | 2013-02-22 | 64 | 34d | 0d | Diseñador de software | 8h | 400 |
| 66 | 1.2.2.2.5 | Diagrama de Clases |  | 1d | 2013-02-25 | 2013-02-25 | 65 | 34d |  | Diseñador de software | 8h | 400 |
| 67 | 1.2.2.2.6 | Revisar la Arquitectura | milestone | 0d | 2013-02-21 | 2013-02-21 | 64 | 0d |  | Diseñador de software |  |  |
| 68 | 1.2.2.2.7 | **Diseñar Substistemas de Caso de Uso Priorizado** |  | 5d | 2013-02-22 | 2013-02-28 |  | 0d |  |  | 40h | 2,000 |
| 69 | 1.2.2.2.7.1 | **Diseño de Subsistema - Adm Alumnos** |  | 2d | 2013-02-22 | 2013-02-25 |  | 0d |  |  | 16h | 800 |
| 70 | 1.2.2.2.7.1.1 | Diseño de clases y diagramas de flujo |  | 2d | 2013-02-22 | 2013-02-25 | 67 | 0d |  | Diseñador de software | 16h | 800 |
| 71 | 1.2.2.2.7.2 | **Diseño de Subsistema - Adm Diagnosticos** |  | 1d | 2013-02-26 | 2013-02-26 |  | 0d |  |  | 8h | 400 |
| 72 | 1.2.2.2.7.2.1 | Diseño de clases y diagramas de flujo |  | 1d | 2013-02-26 | 2013-02-26 | 70 | 0d |  | Diseñador de software | 8h | 400 |
| 73 | 1.2.2.2.7.3 | **Diseño de Subsistema - Adm Grupos** |  | 1d | 2013-02-27 | 2013-02-27 |  | 0d |  |  | 8h | 400 |
| 74 | 1.2.2.2.7.3.1 | Diseño de clases y diagramas de flujo |  | 1d | 2013-02-27 | 2013-02-27 | 72 | 0d |  | Diseñador de software | 8h | 400 |
| 75 | 1.2.2.2.7.4 | **Diseño de Subsistema - Adm Rutinas** |  | 1d | 2013-02-28 | 2013-02-28 |  | 31d |  |  | 8h | 400 |
| 76 | 1.2.2.2.7.4.1 | Diseño de Clases y diagramas de flujo |  | 1d | 2013-02-28 | 2013-02-28 | 74 | 31d |  | Diseñador de software | 8h | 400 |
| 77 | 1.2.2.2.8 | Diseño de Base de Datos |  | 2d | 2013-02-28 | 2013-03-01 | 74 | 0d |  | Diseñador de software | 16h | 800 |
| 78 | 1.2.2.2.9 | Revision del Diseño | milestone | 0d | 2013-03-01 | 2013-03-01 | 77 | 0d |  | Diseñador de software |  |  |
| 79 | 1.2.2.3 | **Implementacion** |  | 20d | 2013-03-04 | 2013-03-29 |  | 0d |  |  | 164h | 8,200 |
| 80 | 1.2.2.3.1 | Estructurar el modelo de Implementacion |  | 0.5d | 2013-03-04 | 2013-03-04 | 78 | 0d |  | Diseñador de software | 4h | 200 |
| 81 | 1.2.2.3.2 | Plan de Integracion de Sistema |  | 0.5d | 2013-03-04 | 2013-03-04 | 80 | 0d |  | Analista | 4h | 200 |
| 82 | 1.2.2.3.3 | Plan de Integracion de Subsistemas |  | 0.5d | 2013-03-05 | 2013-03-05 | 81 | 0d |  | Analista | 4h | 200 |

| ID | WBS | Task | Type | Duration | Start | Finish | Predecessors | Total slack | Free slack | Constraint | Resources | Work | Cost |
| --- | --- | --- | --- | --- | --- | --- | --- | --- | --- | --- | --- | --- | --- |
| 83 | 1.2.2.3.4 | **Implementar Componentes Priorizados** |  | 4d | 2013-03-05 | 2013-03-11 |  | 10d |  |  |  | 32h | 1,600 |
| 84 | 1.2.2.3.4.1 | Implementar Componente Adm Alumnos |  | 2d | 2013-03-05 | 2013-03-07 | 82 | 10d | 0d |  | Programador A | 16h | 800 |
| 85 | 1.2.2.3.4.2 | Implementar Componente Adm Diagnosticos |  | 1d | 2013-03-07 | 2013-03-08 | 84 | 10d | 0d |  | Programador A | 8h | 400 |
| 86 | 1.2.2.3.4.3 | Implementar Componente Adm Grupos |  | 1d | 2013-03-07 | 2013-03-08 | 84 | 25.5d |  |  | Programador A | 8h | 400 |
| 87 | 1.2.2.3.4.4 | Implementar Componente Adm Rutinas |  | 1d | 2013-03-08 | 2013-03-11 | 85 | 10d | 0d |  |  |  |  |
| 88 | 1.2.2.3.5 | Corregir Defectos |  | 10d | 2013-03-11 | 2013-03-25 | 87 | 10d | 0d |  | Programador B | 80h | 4,000 |
| 89 | 1.2.2.3.6 | Integrar Subsistemas |  | 2d | 2013-03-25 | 2013-03-27 | 88 | 10d | 0d |  | Programador B | 16h | 800 |
| 90 | 1.2.2.3.7 | Integrar Sistema |  | 2.5d | 2013-03-27 | 2013-03-29 | 89 | 10d | 0d |  | Programador B [120%] | 24h | 1,200 |
| 91 | 1.2.2.3.8 | Sistema Integrado | milestone | 0d | 2013-03-29 | 2013-03-29 | 90 | 10d |  |  | Programador A |  |  |
| 92 | 1.2.2.4 | **Pruebas** |  | 28.5d | 2013-03-05 | 2013-04-12 |  | 0d |  |  |  | 208h | 10,400 |
| 93 | 1.2.2.4.1 | Plan de Pruebas |  | 1d | 2013-03-05 | 2013-03-06 | 82 | 0d |  |  | Pruebas | 8h | 400 |
| 94 | 1.2.2.4.2 | Diseño de Pruebas |  | 1d | 2013-03-06 | 2013-03-07 | 93 | 0d |  |  | Pruebas | 8h | 400 |
| 95 | 1.2.2.4.3 | Implementar Pruebas |  | 1d | 2013-03-07 | 2013-03-08 | 94 | 0d |  |  | Pruebas | 8h | 400 |
| 96 | 1.2.2.4.4 | Diseñar paquetes de prueba y clases |  | 1d | 2013-03-08 | 2013-03-11 | 95 | 0d |  |  | Diseñador de software | 8h | 400 |
| 97 | 1.2.2.4.5 | Implementar pruebas a componentes y subsistemas |  | 10d | 2013-03-11 | 2013-03-25 | 96 | 0d |  |  | Programador A | 80h | 4,000 |
| 98 | 1.2.2.4.6 | Ejecutar pruebas de Integracion |  | 5d | 2013-03-25 | 2013-04-01 | 97 | 0d |  |  | Tester | 40h | 2,000 |
| 99 | 1.2.2.4.7 | Ejecutar pruebas de Sistema |  | 5d | 2013-04-01 | 2013-04-08 | 98 | 0d |  |  | Tester [50%] | 20h | 1,000 |
| 100 | 1.2.2.4.8 | Ejecutar Pruebas de Rendimiento |  | 4.5d | 2013-04-08 | 2013-04-12 | 99 | 0d |  |  | Tester | 36h | 1,800 |
| 101 | 1.2.2.4.9 | Evaluar Pruebas | milestone | 0d | 2013-04-12 | 2013-04-12 | 100 | 0d |  |  | Pruebas |  |  |
| 102 | 1.2.2.5 | **Gestion del cambio y Configuraciones** |  | 45d | 2013-02-11 | 2013-04-12 |  | 0d |  |  |  | 90h | 4,500 |
| 103 | 1.2.2.5.1 | Gestionar los Cambios |  | 45d | 2013-02-11 | 2013-04-12 | 29 | 0d |  |  | Configurador [25%] | 90h | 4,500 |
| 104 | 1.2.2.5.2 | Control de Cambios hechos | milestone | 0d | 2013-04-12 | 2013-04-12 | 103 | 0d |  |  | Configurador |  |  |
| 105 | 1.2.2.6 | **Administracion de Proyectos** |  | 45d | 2013-02-11 | 2013-04-12 |  | 0d |  |  |  | 138h | 6,900 |
| 106 | 1.2.2.6.1 | Desarrollar Plan de Iteracion |  | 1d | 2013-02-11 | 2013-02-11 | 41 | 0d |  |  | Analista | 8h | 400 |
| 107 | 1.2.2.6.2 | Desarrollar Plan de Trabajo |  | 1d | 2013-02-12 | 2013-02-12 | 106 | 0d |  |  | Analista | 8h | 400 |
| 108 | 1.2.2.6.3 | Asignar Recursos al proyecto |  | 1d | 2013-02-13 | 2013-02-13 | 107 | 0d |  |  | Jefe de Proyecto | 8h | 400 |
| 109 | 1.2.2.6.4 | Revisar lista de riesgos |  | 2d | 2013-02-14 | 2013-02-15 | 108 | 0d |  |  | Jefe de Proyecto | 16h | 800 |
| 110 | 1.2.2.6.5 | Evaluar Iteracion |  | 2d | 2013-02-18 | 2013-02-19 | 109 | 0d |  |  | Jefe de Proyecto | 16h | 800 |
| 111 | 1.2.2.6.6 | Actualizar Plan de Proyecto |  | 1d | 2013-02-20 | 2013-02-20 | 110 | 0d |  |  | Analista | 8h | 400 |
| 112 | 1.2.2.6.7 | Plan de Proyecto Actualizado | milestone | 0d | 2013-02-20 | 2013-02-20 | 111 | 0d |  |  |  |  |  |
| 113 | 1.2.2.6.8 | Supervisar avances y calendario |  | 37d | 2013-02-21 | 2013-04-12 | 112 | 0d |  |  | Jefe de Proyecto [25%] | 74h | 3,700 |
| 114 | 1.2.2.6.9 | Reporte Semana 1 | milestone | 0d | 2013-02-25 | 2013-02-25 |  | 35d |  | start no earlier than 2013-02-25 | Jefe de Proyecto |  |  |
| 115 | 1.2.2.6.10 | Reporte Semana 2 | milestone | 0d | 2013-03-04 | 2013-03-04 |  | 30d |  | start no earlier than 2013-03-04 | Jefe de Proyecto |  |  |
| 116 | 1.2.2.6.11 | Reporte Semana 3 | milestone | 0d | 2013-03-11 | 2013-03-11 |  | 25d |  | start no earlier than 2013-03-11 | Jefe de Proyecto |  |  |
| 117 | 1.2.2.6.12 | Reporte Semana 4 | milestone | 0d | 2013-03-18 | 2013-03-18 |  | 20d |  | start no earlier than 2013-03-18 | Jefe de Proyecto |  |  |
| 118 | 1.2.2.6.13 | Reporte Semana 5 | milestone | 0d | 2013-03-25 | 2013-03-25 |  | 15d |  | start no earlier than 2013-03-25 | Jefe de Proyecto |  |  |
| 119 | 1.2.2.6.14 | Reporte Semana 6 | milestone | 0d | 2013-04-01 | 2013-04-01 |  | 10d |  | start no earlier than 2013-04-01 | Jefe de Proyecto |  |  |
| 120 | 1.2.2.6.15 | Reporte Semana 7 | milestone | 0d | 2013-04-08 | 2013-04-08 |  | 5d |  | start no earlier than 2013-04-08 | Jefe de Proyecto |  |  |

| ID | WBS | Task | Type | Duration | Start | Finish | Predecessors | Complete | Total slack | Resources | Work | Cost |
| --- | --- | --- | --- | --- | --- | --- | --- | --- | --- | --- | --- | --- |
| 121 | 1.2.2.7 | **Entorno** |  | 45d | 2013-02-11 | 2013-04-12 |  |  | 0d |  | 208h | 10,400 |
| 122 | 1.2.2.7.1 | Configurar Proceso |  | 1d | 2013-02-11 | 2013-02-11 | 41 |  | 0d | Jefe de Proyecto | 8h | 400 |
| 123 | 1.2.2.7.2 | Inmprovisar Proceso |  | 1d | 2013-02-12 | 2013-02-12 | 122 |  | 0d | Jefe de Proyecto | 8h | 400 |
| 124 | 1.2.2.7.3 | Seleccionar Herramientas y Obtener Herramientas |  | 2d | 2013-02-13 | 2013-02-14 | 123 |  | 0d | Configurador | 16h | 800 |
| 125 | 1.2.2.7.4 | Instalar y Configurar Herramientas |  | 2d | 2013-02-15 | 2013-02-18 | 124 |  | 0d | Configurador | 16h | 800 |
| 126 | 1.2.2.7.5 | Entrenamiento |  | 1d | 2013-02-19 | 2013-02-19 | 125 |  | 0d | Implementador | 8h | 400 |
| 127 | 1.2.2.7.6 | Dar soporte al Desarrollo |  | 38d | 2013-02-20 | 2013-04-12 | 126 |  | 0d | Implementador [25%] | 76h | 3,800 |
| 128 | 1.2.2.7.7 | Supervisar Fase |  | 38d | 2013-02-20 | 2013-04-12 | 126 |  | 0d | Jefe de Proyecto [25%] | 76h | 3,800 |
| 129 | 1.2.2.7.8 | Reporte de Soporte | milestone | 0d | 2013-04-12 | 2013-04-12 | 127 |  | 0d | Configurador |  |  |
| 130 | 1.2.3 | Fin de Fase | milestone | 0d | 2013-04-12 | 2013-04-12 | 101 |  | 0d | Jefe de Proyecto |  |  |
| 131 | 2 | Fase de Construccion | manual | 1d | 2013-01-14 A | 2013-01-14 A |  | 100% |  |  |  |  |
| 132 | 3 | Comienzo | manual | 1d | 2013-01-14 A | 2013-01-14 A |  | 100% |  |  |  |  |
| 134 | 4 | <Tarea nueva> | manual | 1d | 2013-01-14 A | 2013-01-14 A |  | 100% |  |  |  |  |
| 136 | 5 | Iteracion 1 | manual | 1d | 2013-01-14 A | 2013-01-14 A |  | 100% |  |  |  |  |
| 137 | 6 | Requisitos | manual | 1d | 2013-01-14 A | 2013-01-14 A |  | 100% |  |  |  |  |
| 138 | 7 | Analisis y Diseño | manual | 1d | 2013-01-14 A | 2013-01-14 A |  | 100% |  |  |  |  |
| 139 | 8 | Implementacion | manual | 1d | 2013-01-14 A | 2013-01-14 A |  | 100% |  |  |  |  |
| 140 | 9 | Pruebas | manual | 1d | 2013-01-14 A | 2013-01-14 A |  | 100% |  |  |  |  |
| 142 | 10 | Gestion del cambio y Configuraciones | manual | 1d | 2013-01-14 A | 2013-01-14 A |  | 100% |  |  |  |  |
| 143 | 11 | Administracion de Proyectos | manual | 1d | 2013-01-14 A | 2013-01-14 A |  | 100% |  |  |  |  |
| 144 | 12 | Entorno | manual | 1d | 2013-01-14 A | 2013-01-14 A |  | 100% |  |  |  |  |
| 146 | 13 | Iteracion 2 | manual | 1d | 2013-01-14 A | 2013-01-14 A |  | 100% |  |  |  |  |
| 147 | 14 | Requisitos | manual | 1d | 2013-01-14 A | 2013-01-14 A |  | 100% |  |  |  |  |
| 148 | 15 | Analisis y Diseño | manual | 1d | 2013-01-14 A | 2013-01-14 A |  | 100% |  |  |  |  |
| 149 | 16 | Implementacion | manual | 1d | 2013-01-14 A | 2013-01-14 A |  | 100% |  |  |  |  |
| 150 | 17 | Pruebas | manual | 1d | 2013-01-14 A | 2013-01-14 A |  | 100% |  |  |  |  |
| 151 | 18 | Despliegue | manual | 1d | 2013-01-14 A | 2013-01-14 A |  | 100% |  |  |  |  |
| 153 | 19 | Gestion del cambio y Configuraciones | manual | 1d | 2013-01-14 A | 2013-01-14 A |  | 100% |  |  |  |  |
| 154 | 20 | Administracion de Proyectos | manual | 1d | 2013-01-14 A | 2013-01-14 A |  | 100% |  |  |  |  |
| 155 | 21 | Entorno | manual | 1d | 2013-01-14 A | 2013-01-14 A |  | 100% |  |  |  |  |
| 157 | 22 | Fase de Transicion | manual | 1d | 2013-01-14 A | 2013-01-14 A |  | 100% |  |  |  |  |
| 158 | 23 | Iteracion 1 | manual | 1d | 2013-01-14 A | 2013-01-14 A |  | 100% |  |  |  |  |
| 159 | 24 | Implementacion | manual | 1d | 2013-01-14 A | 2013-01-14 A |  | 100% |  |  |  |  |
| 160 | 25 | Pruebas | manual | 1d | 2013-01-14 A | 2013-01-14 A |  | 100% |  |  |  |  |
| 161 | 26 | Despliegue | manual | 1d | 2013-01-14 A | 2013-01-14 A |  | 100% |  |  |  |  |
| 163 | 27 | Gestion del cambio y Configuraciones | manual | 1d | 2013-01-14 A | 2013-01-14 A |  | 100% |  |  |  |  |
| 164 | 28 | Administracion de Proyectos | manual | 1d | 2013-01-14 A | 2013-01-14 A |  | 100% |  |  |  |  |
| 165 | 29 | Entorno | manual | 1d | 2013-01-14 A | 2013-01-14 A |  | 100% |  |  |  |  |
| 167 | 30 | Iteracion 3 | manual | 1d | 2013-01-14 A | 2013-01-14 A |  | 100% |  |  |  |  |
| 168 | 31 | Implementacion | manual | 1d | 2013-01-14 A | 2013-01-14 A |  | 100% |  |  |  |  |
| 169 | 32 | Pruebas | manual | 1d | 2013-01-14 A | 2013-01-14 A |  | 100% |  |  |  |  |
| 170 | 33 | Despliegue | manual | 1d | 2013-01-14 A | 2013-01-14 A |  | 100% |  |  |  |  |
| 172 | 34 | Gestion del cambio y Configuraciones | manual | 1d | 2013-01-14 A | 2013-01-14 A |  | 100% |  |  |  |  |
| 173 | 35 | Administracion de Proyectos | manual | 1d | 2013-01-14 A | 2013-01-14 A |  | 100% |  |  |  |  |
| 174 | 36 | Entorno | manual | 1d | 2013-01-14 A | 2013-01-14 A |  | 100% |  |  |  |  |
| 182 | 37 | Iteracion 2 | manual | 1d | 2013-01-14 A | 2013-01-14 A |  | 100% |  |  |  |  |
