# C.A.M.E

Schedule from MS Project, 2013-01-14 to 2013-08-23, status date 2013-02-11, costs in $, A marks actual dates.

## Calendars

- SARJ: Mon-Fri 09:00-13:00, 15:00-19:00; Sat-Sun off.

## Resources

| Resource | Rate |
| --- | --- |
| Analista A | 50 |
| Jefe de Proyecto | 50 |
| Especificador de Requerimientos | 50 |
| Programador A | 50 |
| Programador B | 50 |
| Diseñador de Software A | 50 |
| Pruebas | 50 |
| Tester A | 50 |
| Implementador | 50 |
| Configurador | 50 |

## Schedule

| ID | WBS | Task | Type | Duration | Start | Finish | Predecessors | Complete | Remaining | Total slack | Deadline | Resources | Work | Actual work | Cost | Actual cost |
| --- | --- | --- | --- | --- | --- | --- | --- | --- | --- | --- | --- | --- | --- | --- | --- | --- |
| 1 | 1 | **Proyecto C.A.M.E** |  | 160d | 2013-01-14 A | 2013-08-23 |  | 13% | 139d | 0d |  |  | 3870.13h | 480.4h | 193,506.41 | 24,020 |
| 2 | 1.1 | **Fase de inicio** |  | 20d | 2013-01-14 A | 2013-02-08 A |  | 100% |  |  | 2013-02-08 |  | 451.2h | 451.2h | 22,560 | 22,560 |
| 3 | 1.1.1 | Iteracion 1 - Modelado de Negocios |  | 20d | 2013-01-14 A | 2013-02-08 A |  | 100% |  |  | 2013-02-08 | Jefe de Proyecto; Analista A; Especificador de Requerimientos | 451.2h | 451.2h | 22,560 | 22,560 |
| 4 | 1.1.2 | Hito - Revision de Contrato | milestone | 0d | 2013-02-08 A | 2013-02-08 A | 3 | 100% |  |  |  | Jefe de Proyecto |  |  |  |  |
| 5 | 1.2 | **Fase de Elaboracion** |  | 45d | 2013-02-11 A | 2013-04-12 |  | 2% | 44d | 0d |  |  | 1314h | 29.2h | 65,700 | 1,460 |
| 6 | 1.2.1 | Iteracion 1 - Desarrollo de Arquitectura |  | 45d | 2013-02-11 A | 2013-04-12 | 4 | 2% | 44d | 0d |  | Analista A [75%]; Diseñador de Software A [90%]; Programador A [75%]; Tester A [50%]; Pruebas [50%]; Jefe de Proyecto [25%] | 1314h | 29.2h | 65,700 | 1,460 |
| 7 | 1.2.2 | Hito - Prueba de Arquitectura | milestone | 0d | 2013-04-12 | 2013-04-12 | 6 |  |  | 0d |  | Pruebas |  |  |  |  |
| 8 | 1.3 | **Fase de Construccion** |  | 75d | 2013-04-15 | 2013-07-26 |  |  |  | 0d |  |  | 1816.93h |  | 90,846.41 |  |
| 9 | 1.3.1 | Iteracion 1 - Desarrollo y Pruebas |  | 25d | 2013-04-15 | 2013-05-17 | 7 |  |  | 0d |  | Analista A [75%]; Diseñador de Software A; Programador A [75%]; Pruebas [50%]; Tester A [50%]; Jefe de Proyecto [20%] | 740h |  | 37,000 |  |
| 10 | 1.3.2 | Hito Iteracion 1 - resultados | milestone | 0d | 2013-05-17 | 2013-05-17 | 9 |  |  | 0d |  | Pruebas |  |  |  |  |
| 11 | 1.3.3 | Iteracion 2 -Desarrollo |  | 25d | 2013-05-20 | 2013-06-21 | 10 |  |  | 0d |  | Analista A [25%]; Diseñador de Software A [50%]; Programador A [75%]; Pruebas [50%]; Tester A [50%]; Jefe de Proyecto [20%] | 538.47h |  | 26,923.33 |  |
| 12 | 1.3.4 | Hito Iteracion 2 - Pruebas completas | milestone | 0d | 2013-06-21 | 2013-06-21 | 11 |  |  | 0d |  | Pruebas |  |  |  |  |
| 13 | 1.3.5 | Iteracion 3 -Desarrollo |  | 25d | 2013-06-24 | 2013-07-26 | 12 |  |  | 0d |  | Analista A [25%]; Diseñador de Software A [50%]; Programador A [75%]; Pruebas [50%]; Tester A [50%]; Jefe de Proyecto [20%] | 538.46h |  | 26,923.08 |  |
| 14 | 1.3.6 | Hito Iteracion 3 - Pruebas completas | milestone | 0d | 2013-07-26 | 2013-07-26 | 13 |  |  | 0d |  | Pruebas |  |  |  |  |
| 15 | 1.4 | **Fase de Entrega** |  | 20d | 2013-07-29 | 2013-08-23 |  |  |  | 0d |  |  | 288h |  | 14,400 |  |
| 16 | 1.4.1 | Iteracion 1 - Release 1 |  | 10d | 2013-07-29 | 2013-08-09 | 14, 12 |  |  | 0d |  | Implementador [75%]; Configurador [50%]; Programador B [50%]; Jefe de Proyecto [25%] | 160h |  | 8,000 |  |
| 17 | 1.4.2 | Hito Iteracion 1 - Revisión de Release | milestone | 0d | 2013-08-09 | 2013-08-09 | 16 |  |  | 0d |  | Implementador |  |  |  |  |
| 18 | 1.4.3 | Iteracion 2 - Release 2 |  | 10d | 2013-08-12 | 2013-08-23 | 17 |  |  | 0d |  | Implementador [50%]; Configurador [50%]; Jefe de Proyecto [25%]; Programador B [35%] | 128h |  | 6,400 |  |
| 19 | 1.4.4 | Hito Iteracion 2 - Revisión de Release | milestone | 0d | 2013-08-23 | 2013-08-23 | 18 |  |  | 0d |  | Implementador |  |  |  |  |
| 20 | 1.5 | Fin de Proyecto | milestone | 0d | 2013-08-23 | 2013-08-23 | 19 |  |  | 0d |  |  |  |  |  |  |
